# Progetto LPI

Schedule from MS Project, 2023-05-02 to 2023-05-26, status date 2023-05-03.

## Calendars

- Standard: Mon 09:05-10:35, 10:50-12:20, 13:15-14:45, 15:00-16:30; Tue 08:20-09:50, 10:05-11:35; Wed 08:20-09:50, 10:05-11:35, 12:30-14:00, 14:15-15:45; Thu 08:20-09:50, 10:05-11:35; Fri 08:20-09:50, 10:05-11:35, 12:30-14:00; Sat-Sun off. Exceptions (off unless hours are given): 2023-05-02 to 2023-05-26 09:05-12:20, 13:15-16:30 (Lunedì, recurring), 2023-05-02 to 2023-05-26 08:20-11:35 (Martedì, recurring), 2023-05-02 to 2023-05-26 09:05-12:20, 13:15-16:30 (Mercoledì, recurring), 2023-05-02 to 2023-05-26 08:20-11:35 (Giovedì, recurring), 2023-05-02 to 2023-05-26 08:20-11:35, 12:30-14:00 (Venerdì, recurring), 2023-05-18 to 2023-05-19 (Ascensione).

## Resources

| Resource |
| --- |
| GIOELE |

## Schedule

| ID | WBS | Task | Duration | Start | Finish | Predecessors | Baseline start | Baseline finish | Baseline duration | Total slack | Free slack | Resources | Work |
| --- | --- | --- | --- | --- | --- | --- | --- | --- | --- | --- | --- | --- | --- |
| 1 | 1 | **Progetto Kyudd-imi (Sito Web per il monitoraggio delle finestre del CPTT)** | 10.31d | 2023-05-02 08:20 | 2023-05-26 14:00 |  | 2023-05-02 08:20 | 2023-05-26 14:00 | 10.31d | 0d |  |  | 66.55h |
| 2 | 1.1 | **Analisi** | 0.75d | 2023-05-02 08:20 | 2023-05-03 11:50 |  | 2023-05-02 08:20 | 2023-05-03 14:45 | 1d | 1.56d |  |  | 4.2h |
| 3 | 1.1.1 | Analisi QdC e confronto docente | 1h | 2023-05-02 08:20 | 2023-05-02 09:20 |  | 2023-05-02 08:20 | 2023-05-02 10:20 | 2h | 1d | 0d | GIOELE [70%] | 0.7h |
| 4 | 1.1.2 | Creazione GANTT preventivo | 4h | 2023-05-02 09:20 | 2023-05-03 10:50 | 3 | 2023-05-02 10:20 | 2023-05-03 11:50 | 4h | 1d | 0d | GIOELE [70%] | 2.8h |
| 5 | 1.1.3 | Definizione requisiti | 1h | 2023-05-03 10:50 | 2023-05-03 11:50 | 4 | 2023-05-03 11:50 | 2023-05-03 14:45 | 2h | 1d | 0d | GIOELE [70%] | 0.7h |
| 6 | 1.2 | **Progettazione** | 1.88d | 2023-05-03 11:50 | 2023-05-08 12:20 |  | 2023-05-03 14:45 | 2023-05-10 09:35 | 2.5d | 1.56d |  |  | 10.5h |
| 7 | 1.2.1 | Use case e test case | 2h | 2023-05-03 11:50 | 2023-05-03 14:45 | 5 | 2023-05-03 14:45 | 2023-05-04 08:35 | 2h | 1d | 0d | GIOELE [70%] | 1.4h |
| 8 | 1.2.2 | Schema di rete | 1h | 2023-05-03 14:45 | 2023-05-03 15:45 | 7 | 2023-05-04 08:35 | 2023-05-04 11:35 | 3h | 1d | 0d | GIOELE [70%] | 0.7h |
| 9 | 1.2.3 | Gui WEB | 5h | 2023-05-03 15:45 | 2023-05-05 09:20 | 8, 7 | 2023-05-05 08:20 | 2023-05-05 11:20 | 3h | 1d | 0d | GIOELE [70%] | 3.5h |
| 10 | 1.2.4 | Database | 3h | 2023-05-05 09:20 | 2023-05-05 13:15 | 9 | 2023-05-05 11:20 | 2023-05-08 09:20 | 2h | 1d | 0d | GIOELE [70%] | 2.1h |
| 11 | 1.2.5 | Ricerca grafica 3D | 4h | 2023-05-05 13:15 | 2023-05-08 12:20 | 10 | 2023-05-08 09:20 | 2023-05-10 09:35 | 10h | 1d | 0d | GIOELE [70%] | 2.8h |
| 12 | 1.3 | **Implementazione** | 4.12d | 2023-05-08 13:15 | 2023-05-17 11:20 |  | 2023-05-10 09:35 | 2023-05-25 09:50 | 6d | 1.56d |  |  | 20.3h |
| 13 | 1.3.1 | Creazione DB | 3h | 2023-05-08 13:15 | 2023-05-08 16:15 | 11 | 2023-05-10 09:35 | 2023-05-10 14:30 | 4h | 1d | 0d | GIOELE [70%] | 2.1h |
| 14 | 1.3.2 | Configurazione DB | 2h | 2023-05-08 16:15 | 2023-05-09 10:05 | 13 | 2023-05-10 14:30 | 2023-05-10 16:30 | 2h | 1d | 0d | GIOELE [70%] | 1.4h |
| 15 | 1.3.3 | **Sito WEB** | 2.5d | 2023-05-09 10:05 | 2023-05-15 14:00 |  | 2023-05-11 08:20 | 2023-05-25 09:50 | 5.25d | 3.56d |  |  | 12h |
| 16 | 1.3.3.1 | Pagina di login | 2h | 2023-05-09 10:05 | 2023-05-10 09:35 | 14 | 2023-05-11 08:20 | 2023-05-12 13:00 | 7h | 3.31d | 0d | GIOELE [60%] | 1.2h |
| 17 | 1.3.3.2 | Lista finestre | 2h | 2023-05-10 09:35 | 2023-05-10 11:35 | 16 | 2023-05-12 13:00 | 2023-05-15 15:00 | 6h | 3.31d | 0d | GIOELE [60%] | 1.2h |
| 18 | 1.3.3.3 | Statistiche finestre | 8h | 2023-05-10 14:30 | 2023-05-12 11:05 | 20 | 2023-05-15 15:00 | 2023-05-17 12:20 | 8h | 3.31d | 0d | GIOELE [60%] | 4.8h |
| 19 | 1.3.3.4 | Visualizzazione 3D | 1h | 2023-05-10 11:35 | 2023-05-10 13:30 | 17 | 2023-05-17 13:15 | 2023-05-22 13:45 | 7h | 3.31d | 0d | GIOELE [60%] | 0.6h |
| 20 | 1.3.3.5 | Colorazione finestre | 1h | 2023-05-10 13:30 | 2023-05-10 14:30 | 19 | 2023-05-22 13:45 | 2023-05-24 11:05 | 8h | 3.31d | 0d | GIOELE [60%] | 0.6h |
| 21 | 1.3.3.6 | Modifica base dati | 6h | 2023-05-12 11:05 | 2023-05-15 14:00 | 18, 20 | 2023-05-24 11:05 | 2023-05-25 09:50 | 6h | 3.31d | 0d | GIOELE [60%] | 3.6h |
| 22 | 1.3.4 | Messa in funzione sul Raspberry | 8h | 2023-05-15 14:00 | 2023-05-17 11:20 | 21 |  |  |  | 3.56d |  | GIOELE [60%] | 4.8h |
| 23 | 1.4 | **Test** | 5d | 2023-05-09 10:05 | 2023-05-23 09:35 |  | 2023-05-11 08:20 | 2023-05-26 09:05 | 5.56d | 1.56d |  |  | 4h |
| 24 | 1.4.1 | Esecuzione test case | 40h | 2023-05-09 10:05 | 2023-05-23 09:35 | 14 | 2023-05-11 08:20 | 2023-05-26 09:05 | 44.5h | 1.56d | 0d | GIOELE [10%] | 4h |

| ID | WBS | Task | Duration | Start | Finish | Predecessors | Baseline start | Baseline finish | Baseline duration | Total slack | Resources | Work |
| --- | --- | --- | --- | --- | --- | --- | --- | --- | --- | --- | --- | --- |
| 25 | 1.5 | **Chiusura** | 0.5d | 2023-05-23 09:35 | 2023-05-24 11:05 |  | 2023-05-26 09:05 | 2023-05-26 14:00 | 0.5d | 1.56d |  | 2.8h |
| 26 | 1.5.1 | chiusura/Abstract | 4h | 2023-05-23 09:35 | 2023-05-24 11:05 | 24 | 2023-05-26 09:05 | 2023-05-26 14:00 | 4h | 1.56d | GIOELE [70%] | 2.8h |
| 27 | 1.6 | GANTT consuntivo | 82.5h | 2023-05-02 08:20 | 2023-05-26 14:00 |  | 2023-05-02 08:20 | 2023-05-26 14:00 | 82.5h | 0d | GIOELE [1%] | 0.82h |
| 28 | 1.7 | Documentazione | 82.5h | 2023-05-02 08:20 | 2023-05-26 14:00 |  | 2023-05-02 08:20 | 2023-05-26 14:00 | 82.5h | 0d | GIOELE [29%] | 23.93h |
